# Snowdon Towers – Interiors: CFS framing & drywall (sample)

Schedule from Primavera P6, 2026-06-08 to 2026-12-31, data date 2026-09-28, A marks actual dates.
Must finish by 2026-12-04

## Calendars

- CAS 5-day (8h, US holidays): Mon-Fri 07:00-11:00, 11:30-15:30; Sat-Sun off. Exceptions (off unless hours are given): 2026-07-03, 2026-09-07, 2026-11-26 to 2026-11-27, 2026-12-24 to 2026-12-25.

## Schedule

| ID | WBS | Activity | Type | Duration | Start | Finish | Predecessors | Complete | Planned start | Planned finish | Total float | Constraint | Crew | Location | Install Stage |
| --- | --- | --- | --- | --- | --- | --- | --- | --- | --- | --- | --- | --- | --- | --- | --- |
|  | MS | **Milestones** |  |  | 2026-06-08 | 2026-12-31 |  |  |  |  |  |  |  |  |  |
| IN-0000 |  | NTP – interior framing & drywall | milestone | 0d | 2026-06-08 A | 2026-06-08 A |  | 100% |  |  |  |  | GC / by others |  |  |
| IN-0100 |  | Roof dry-in (by GC) | milestone | 0d | 2026-10-19 | 2026-10-19 |  |  |  |  | 3d | start on or after 2026-10-19 | GC / by others |  |  |
| IN-9999 |  | Interior framing & drywall complete | milestone | 0d | 2026-12-31 | 2026-12-31 | PK-1050, L1A-1050, L1B-1050, L1C-1050, M1-1050, L2-1050, L3-1050, L4-1050, L5-1050, R1-1050, B39-1050, R2-1050, GR-1050, PP-1050 |  | 2026-12-04 | 2026-12-04 | -17d | finish on or before 2026-12-04 | GC / by others |  |  |
|  | INT | **Interior framing & drywall** |  |  | 2026-06-08 | 2026-12-31 |  |  |  |  |  |  |  |  |  |
|  | PK | **Parking** |  |  | 2026-06-08 | 2026-06-26 |  |  |  |  |  |  |  |  |  |
| PK-1000 |  | Parking – Layout & track |  | 2d | 2026-06-08 A | 2026-06-09 A | IN-0000 | 100% |  |  |  |  | Layout crew | Parking | Layout |
| PK-1010 |  | Parking – Frame walls |  | 5d | 2026-06-09 A | 2026-06-16 A | PK-1000 SS+1d | 100% | 2026-06-09 | 2026-06-15 |  |  | Framing crew | Parking | Framed |
| PK-1030 |  | Parking – Hang board |  | 4d | 2026-06-15 A | 2026-06-18 A | PK-1010 SS+2d, PK-1010 FF+2d, PK-1020 FF+1d | 100% | 2026-06-12 | 2026-06-17 |  |  | Board crew | Parking | Boarded |
| PK-1020 |  | Parking – Cover inspection (in-wall MEP) | milestone | 0d | 2026-06-17 A | 2026-06-17 A | PK-1010 FS+1d | 100% | 2026-06-16 | 2026-06-16 |  |  | GC / by others | Parking | Inspection |
| PK-1040 |  | Parking – Tape & mud |  | 4d | 2026-06-18 A | 2026-06-23 A | PK-1030 SS+3d, PK-1030 FF+3d | 100% | 2026-06-17 | 2026-06-22 |  |  | Finish crew | Parking | Taped |
| PK-1050 |  | Parking – Sand, finish & punch |  | 3d | 2026-06-24 A | 2026-06-26 A | PK-1040 SS+4d, PK-1040 FF+3d | 100% | 2026-06-23 | 2026-06-25 |  |  | Finish crew | Parking | Finished |
|  | L1A | **Level 1 – Block 35** |  |  | 2026-06-12 | 2026-07-10 |  |  |  |  |  |  |  |  |  |
| L1A-1000 |  | Level 1 – Block 35 – Layout & track |  | 2d | 2026-06-12 A | 2026-06-15 A | PK-1010 SS+3d | 100% |  |  |  |  | Layout crew | L1 - Block 35 | Layout |
| L1A-1010 |  | Level 1 – Block 35 – Frame walls |  | 6d | 2026-06-17 A | 2026-06-25 A | L1A-1000 SS+1d, PK-1010 | 100% | 2026-06-16 | 2026-06-23 |  |  | Framing crew | L1 - Block 35 | Framed |
| L1A-1030 |  | Level 1 – Block 35 – Hang board |  | 4d | 2026-06-24 A | 2026-06-29 A | L1A-1010 SS+3d, L1A-1010 FF+2d, L1A-1020 FF+1d, PK-1030 | 100% | 2026-06-22 | 2026-06-25 |  |  | Board crew | L1 - Block 35 | Boarded |
| L1A-1020 |  | Level 1 – Block 35 – Cover inspection (in-wall MEP) | milestone | 0d | 2026-06-26 A | 2026-06-26 A | L1A-1010 FS+1d | 100% | 2026-06-24 | 2026-06-24 |  |  | GC / by others | L1 - Block 35 | Inspection |
| L1A-1040 |  | Level 1 – Block 35 – Tape & mud |  | 5d | 2026-06-29 A | 2026-07-07 A | L1A-1030 SS+3d, L1A-1030 FF+3d, PK-1040 | 100% | 2026-06-25 | 2026-07-01 |  |  | Finish crew | L1 - Block 35 | Taped |
| L1A-1050 |  | Level 1 – Block 35 – Sand, finish & punch |  | 4d | 2026-07-07 A | 2026-07-10 A | L1A-1040 SS+4d, L1A-1040 FF+3d, PK-1050 | 100% | 2026-07-01 | 2026-07-07 |  |  | Finish crew | L1 - Block 35 | Finished |
|  | L1B | **Level 1 – Block 37** |  |  | 2026-06-22 | 2026-07-21 |  |  |  |  |  |  |  |  |  |
| L1B-1000 |  | Level 1 – Block 37 – Layout & track |  | 2d | 2026-06-22 A | 2026-06-23 A | L1A-1010 SS+3d | 100% | 2026-06-19 | 2026-06-22 |  |  | Layout crew | L1 - Block 37 | Layout |
| L1B-1010 |  | Level 1 – Block 37 – Frame walls |  | 7d | 2026-06-26 A | 2026-07-08 A | L1B-1000 SS+1d, L1A-1010 | 100% | 2026-06-24 | 2026-07-02 |  |  | Framing crew | L1 - Block 37 | Framed |
| L1B-1030 |  | Level 1 – Block 37 – Hang board |  | 5d | 2026-07-02 A | 2026-07-10 A | L1B-1010 SS+3d, L1B-1010 FF+2d, L1B-1020 FF+1d, L1A-1030 | 100% | 2026-06-30 | 2026-07-07 |  |  | Board crew | L1 - Block 37 | Boarded |
| L1B-1040 |  | Level 1 – Block 37 – Tape & mud |  | 6d | 2026-07-08 A | 2026-07-16 A | L1B-1030 SS+3d, L1B-1030 FF+3d, L1A-1040 | 100% | 2026-07-06 | 2026-07-13 |  |  | Finish crew | L1 - Block 37 | Taped |
| L1B-1020 |  | Level 1 – Block 37 – Cover inspection (in-wall MEP) | milestone | 0d | 2026-07-09 A | 2026-07-09 A | L1B-1010 FS+1d | 100% | 2026-07-06 | 2026-07-06 |  |  | GC / by others | L1 - Block 37 | Inspection |
| L1B-1050 |  | Level 1 – Block 37 – Sand, finish & punch |  | 5d | 2026-07-14 A | 2026-07-21 A | L1B-1040 SS+4d, L1B-1040 FF+3d, L1A-1050 | 100% | 2026-07-10 | 2026-07-16 |  |  | Finish crew | L1 - Block 37 | Finished |

| ID | WBS | Activity | Type | Duration | Start | Finish | Predecessors | Complete | Remaining | Planned start | Planned finish | Total float | Location | Install Stage | Crew |
| --- | --- | --- | --- | --- | --- | --- | --- | --- | --- | --- | --- | --- | --- | --- | --- |
|  | L1C | **Level 1 – Block 43** |  |  | 2026-07-02 | 2026-07-24 |  |  |  |  |  |  |  |  |  |
| L1C-1000 |  | Level 1 – Block 43 – Layout & track |  | 2d | 2026-07-02 A | 2026-07-06 A | L1B-1010 SS+4d | 100% |  | 2026-06-30 | 2026-07-01 |  | L1 - Block 43 | Layout | Layout crew |
| L1C-1010 |  | Level 1 – Block 43 – Frame walls |  | 3d | 2026-07-09 A | 2026-07-13 A | L1C-1000 SS+1d, L1B-1010 | 100% |  | 2026-07-06 | 2026-07-08 |  | L1 - Block 43 | Framed | Framing crew |
| L1C-1030 |  | Level 1 – Block 43 – Hang board |  | 3d | 2026-07-13 A | 2026-07-15 A | L1C-1010 SS+2d, L1C-1010 FF+2d, L1C-1020 FF+1d, L1B-1030 | 100% |  | 2026-07-08 | 2026-07-10 |  | L1 - Block 43 | Boarded | Board crew |
| L1C-1020 |  | Level 1 – Block 43 – Cover inspection (in-wall MEP) | milestone | 0d | 2026-07-14 A | 2026-07-14 A | L1C-1010 FS+1d | 100% |  | 2026-07-09 | 2026-07-09 |  | L1 - Block 43 | Inspection | GC / by others |
| L1C-1040 |  | Level 1 – Block 43 – Tape & mud |  | 3d | 2026-07-17 A | 2026-07-21 A | L1C-1030 SS+3d, L1C-1030 FF+3d, L1B-1040 | 100% |  | 2026-07-14 | 2026-07-16 |  | L1 - Block 43 | Taped | Finish crew |
| L1C-1050 |  | Level 1 – Block 43 – Sand, finish & punch |  | 2d | 2026-07-23 A | 2026-07-24 A | L1C-1040 SS+4d, L1C-1040 FF+3d, L1B-1050 | 100% |  | 2026-07-20 | 2026-07-21 |  | L1 - Block 43 | Finished | Finish crew |
|  | M1 | **Mezzanine M1** |  |  | 2026-07-13 | 2026-07-29 |  |  |  |  |  |  |  |  |  |
| M1-1000 |  | Mezzanine M1 – Layout & track |  | 2d | 2026-07-13 A | 2026-07-14 A | L1C-1010 SS+2d | 100% |  | 2026-07-08 | 2026-07-09 |  | M1 | Layout | Layout crew |
| M1-1010 |  | Mezzanine M1 – Frame walls |  | 2d | 2026-07-14 A | 2026-07-15 A | M1-1000 SS+1d, L1C-1010 | 100% |  | 2026-07-09 | 2026-07-10 |  | M1 | Framed | Framing crew |
| M1-1030 |  | Mezzanine M1 – Hang board |  | 2d | 2026-07-16 A | 2026-07-17 A | M1-1010 SS+1d, M1-1010 FF+2d, M1-1020 FF+1d, L1C-1030 | 100% |  | 2026-07-13 | 2026-07-14 |  | M1 | Boarded | Board crew |
| M1-1020 |  | Mezzanine M1 – Cover inspection (in-wall MEP) | milestone | 0d | 2026-07-16 A | 2026-07-16 A | M1-1010 FS+1d | 100% |  | 2026-07-13 | 2026-07-13 |  | M1 | Inspection | GC / by others |
| M1-1040 |  | Mezzanine M1 – Tape & mud |  | 2d | 2026-07-22 A | 2026-07-23 A | M1-1030 SS+3d, M1-1030 FF+3d, L1C-1040 | 100% |  | 2026-07-17 | 2026-07-20 |  | M1 | Taped | Finish crew |
| M1-1050 |  | Mezzanine M1 – Sand, finish & punch |  | 2d | 2026-07-28 A | 2026-07-29 A | M1-1040 SS+4d, M1-1040 FF+3d, L1C-1050 | 100% |  | 2026-07-23 | 2026-07-24 |  | M1 | Finished | Finish crew |
|  | L2 | **Level 2** |  |  | 2026-07-15 | 2026-10-05 |  |  |  |  |  |  |  |  |  |
| L2-1000 |  | Level 2 – Layout & track |  | 3d | 2026-07-15 A | 2026-07-17 A | M1-1010 SS+1d | 100% |  | 2026-07-10 | 2026-07-14 |  | L2 | Layout | Layout crew |
| L2-1010 |  | Level 2 – Frame walls |  | 13d | 2026-07-16 A | 2026-08-04 A | L2-1000 SS+1d, M1-1010 | 100% |  | 2026-07-13 | 2026-07-29 |  | L2 | Framed | Framing crew |
| L2-1030 |  | Level 2 – Hang board |  | 9d | 2026-07-24 A | 2026-08-06 A | L2-1010 SS+6d, L2-1010 FF+2d, L2-1020 FF+1d, M1-1030 | 100% |  | 2026-07-21 | 2026-07-31 |  | L2 | Boarded | Board crew |
| L2-1040 |  | Level 2 – Tape & mud |  | 11d | 2026-07-29 A | 2026-08-13 A | L2-1030 SS+3d, L2-1030 FF+3d, M1-1040 | 100% |  | 2026-07-24 | 2026-08-07 |  | L2 | Taped | Finish crew |
| L2-1020 |  | Level 2 – Cover inspection (in-wall MEP) | milestone | 0d | 2026-08-05 A | 2026-08-05 A | L2-1010 FS+1d | 100% |  | 2026-07-30 | 2026-07-30 |  | L2 | Inspection | GC / by others |
| L2-1050 |  | Level 2 – Sand, finish & punch |  | 8d | 2026-09-23 A | 2026-10-05 | L2-1040 SS+4d, L2-1040 FF+3d, M1-1050 | 30% | 6d | 2026-08-03 | 2026-08-12 | -10d | L2 | Finished | Finish crew |
|  | L3 | **Level 3** |  |  | 2026-07-27 | 2026-10-22 |  |  |  |  |  |  |  |  |  |
| L3-1000 |  | Level 3 – Layout & track |  | 4d | 2026-07-27 A | 2026-07-30 A | L2-1010 SS+7d | 100% |  | 2026-07-22 | 2026-07-27 |  | L3 | Layout | Layout crew |
| L3-1010 |  | Level 3 – Frame walls |  | 21d | 2026-08-05 A | 2026-09-04 A | L3-1000 SS+1d, L2-1010 | 100% |  | 2026-07-30 | 2026-08-27 |  | L3 | Framed | Framing crew |
| L3-1030 |  | Level 3 – Hang board |  | 15d | 2026-08-18 A | 2026-09-10 A | L3-1010 SS+9d, L3-1010 FF+2d, L3-1020 FF+1d, L2-1030 | 100% |  | 2026-08-12 | 2026-09-01 |  | L3 | Boarded | Board crew |
| L3-1020 |  | Level 3 – Cover inspection (in-wall MEP) | milestone | 0d | 2026-09-08 A | 2026-09-08 A | L3-1010 FS+1d | 100% |  | 2026-08-28 | 2026-08-28 |  | L3 | Inspection | GC / by others |
| L3-1040 |  | Level 3 – Tape & mud |  | 17d | 2026-09-17 A | 2026-10-12 | L3-1030 SS+3d, L3-1030 FF+3d, L2-1040 | 40% | 11d | 2026-08-17 | 2026-09-09 | -17d | L3 | Taped | Finish crew |
| L3-1050 |  | Level 3 – Sand, finish & punch |  | 13d | 2026-10-06 | 2026-10-22 | L3-1040 SS+4d, L3-1040 FF+3d, L2-1050 |  |  | 2026-08-26 | 2026-09-14 | -10d | L3 | Finished | Finish crew |

| ID | WBS | Activity | Type | Duration | Start | Finish | Predecessors | Complete | Remaining | Planned start | Planned finish | Total float | Location | Install Stage | Crew |
| --- | --- | --- | --- | --- | --- | --- | --- | --- | --- | --- | --- | --- | --- | --- | --- |
|  | L4 | **Level 4** |  |  | 2026-08-20 | 2026-11-11 |  |  |  |  |  |  |  |  |  |
| L4-1000 |  | Level 4 – Layout & track |  | 4d | 2026-08-20 A | 2026-08-25 A | L3-1010 SS+11d | 100% |  | 2026-08-14 | 2026-08-19 |  | L4 | Layout | Layout crew |
| L4-1010 |  | Level 4 – Frame walls |  | 21d | 2026-09-09 A | 2026-10-09 | L4-1000 SS+1d, L3-1010 | 55% | 10d | 2026-08-28 | 2026-09-28 | -18d | L4 | Framed | Framing crew |
| L4-1030 |  | Level 4 – Hang board |  | 15d | 2026-09-28 | 2026-10-16 | L4-1010 SS+9d, L4-1010 FF+2d, L4-1020 FF+1d, L3-1030 |  |  | 2026-09-11 | 2026-10-01 | -9d | L4 | Boarded | Board crew |
| L4-1020 |  | Level 4 – Cover inspection (in-wall MEP) | milestone | 0d | 2026-10-12 | 2026-10-12 | L4-1010 FS+1d |  |  | 2026-09-29 | 2026-09-29 | -6d | L4 | Inspection | GC / by others |
| L4-1040 |  | Level 4 – Tape & mud |  | 18d | 2026-10-13 | 2026-11-05 | L4-1030 SS+3d, L4-1030 FF+3d, L3-1040 |  |  | 2026-09-16 | 2026-10-09 | -17d | L4 | Taped | Finish crew |
| L4-1050 |  | Level 4 – Sand, finish & punch |  | 14d | 2026-10-23 | 2026-11-11 | L4-1040 SS+4d, L4-1040 FF+3d, L3-1050 |  |  | 2026-09-25 | 2026-10-14 | -10d | L4 | Finished | Finish crew |
|  | L5 | **Level 5** |  |  | 2026-09-24 | 2026-12-03 |  |  |  |  |  |  |  |  |  |
| L5-1000 |  | Level 5 – Layout & track |  | 3d | 2026-09-24 A | 2026-09-29 | L4-1010 SS+11d | 60% | 2d | 2026-09-15 | 2026-09-17 | 0d | L5 | Layout | Layout crew |
| L5-1010 |  | Level 5 – Frame walls |  | 18d | 2026-10-12 | 2026-11-04 | L5-1000 SS+1d, L4-1010 |  |  | 2026-09-29 | 2026-10-22 | -9d | L5 | Framed | Framing crew |
| L5-1030 |  | Level 5 – Hang board |  | 13d | 2026-10-22 | 2026-11-09 | L5-1010 SS+8d, L5-1010 FF+2d, L5-1020 FF+1d, L4-1030 |  |  | 2026-10-09 | 2026-10-27 | -9d | L5 | Boarded | Board crew |
| L5-1020 |  | Level 5 – Cover inspection (in-wall MEP) | milestone | 0d | 2026-11-05 | 2026-11-05 | L5-1010 FS+1d |  |  | 2026-10-23 | 2026-10-23 | -8d | L5 | Inspection | GC / by others |
| L5-1040 |  | Level 5 – Tape & mud |  | 15d | 2026-11-06 | 2026-11-30 | L5-1030 SS+3d, L5-1030 FF+3d, L4-1040 |  |  | 2026-10-14 | 2026-11-03 | -17d | L5 | Taped | Finish crew |
| L5-1050 |  | Level 5 – Sand, finish & punch |  | 11d | 2026-11-17 | 2026-12-03 | L5-1040 SS+4d, L5-1040 FF+3d, L4-1050 |  |  | 2026-10-23 | 2026-11-06 | -13d | L5 | Finished | Finish crew |
|  | R1 | **Roof R1** |  |  | 2026-10-23 | 2026-12-08 |  |  |  |  |  |  |  |  |  |
| R1-1000 |  | Roof R1 – Layout & track |  | 2d | 2026-10-23 | 2026-10-26 | IN-0100, L5-1010 SS+9d |  |  | 2026-10-19 | 2026-10-20 | -1d | R1 | Layout | Layout crew |
| R1-1010 |  | Roof R1 – Frame walls |  | 2d | 2026-11-05 | 2026-11-06 | R1-1000 SS+1d, L5-1010 |  |  | 2026-10-23 | 2026-10-26 | -9d | R1 | Framed | Framing crew |
| R1-1020 |  | Roof R1 – Cover inspection (in-wall MEP) | milestone | 0d | 2026-11-09 | 2026-11-09 | R1-1010 FS+1d |  |  | 2026-10-27 | 2026-10-27 | -6d | R1 | Inspection | GC / by others |
| R1-1030 |  | Roof R1 – Hang board |  | 2d | 2026-11-10 | 2026-11-11 | R1-1010 SS+1d, R1-1010 FF+2d, R1-1020 FF+1d, L5-1030 |  |  | 2026-10-28 | 2026-10-29 | -7d | R1 | Boarded | Board crew |
| R1-1040 |  | Roof R1 – Tape & mud |  | 2d | 2026-12-01 | 2026-12-02 | R1-1030 SS+3d, R1-1030 FF+3d, L5-1040 |  |  | 2026-11-04 | 2026-11-05 | -17d | R1 | Taped | Finish crew |
| R1-1050 |  | Roof R1 – Sand, finish & punch |  | 2d | 2026-12-07 | 2026-12-08 | R1-1040 SS+4d, R1-1040 FF+3d, L5-1050 |  |  | 2026-11-10 | 2026-11-11 | -14d | R1 | Finished | Finish crew |
|  | B39 | **Block 39 – Parapet** |  |  | 2026-11-06 | 2026-12-10 |  |  |  |  |  |  |  |  |  |
| B39-1000 |  | Block 39 – Parapet – Layout & track |  | 2d | 2026-11-06 | 2026-11-09 | IN-0100, R1-1010 SS+1d |  |  | 2026-10-26 | 2026-10-27 | -9d | Block 39 - Parapet | Layout | Layout crew |
| B39-1010 |  | Block 39 – Parapet – Frame walls |  | 2d | 2026-11-09 | 2026-11-10 | B39-1000 SS+1d, R1-1010 |  |  | 2026-10-27 | 2026-10-28 | -9d | Block 39 - Parapet | Framed | Framing crew |
| B39-1020 |  | Block 39 – Parapet – Cover inspection (in-wall MEP) | milestone | 0d | 2026-11-11 | 2026-11-11 | B39-1010 FS+1d |  |  | 2026-10-29 | 2026-10-29 | -6d | Block 39 - Parapet | Inspection | GC / by others |
| B39-1030 |  | Block 39 – Parapet – Hang board |  | 2d | 2026-11-12 | 2026-11-13 | B39-1010 SS+1d, B39-1010 FF+2d, B39-1020 FF+1d, R1-1030 |  |  | 2026-10-30 | 2026-11-02 | -7d | Block 39 - Parapet | Boarded | Board crew |
| B39-1040 |  | Block 39 – Parapet – Tape & mud |  | 2d | 2026-12-03 | 2026-12-04 | B39-1030 SS+3d, B39-1030 FF+3d, R1-1040 |  |  | 2026-11-06 | 2026-11-09 | -17d | Block 39 - Parapet | Taped | Finish crew |
| B39-1050 |  | Block 39 – Parapet – Sand, finish & punch |  | 2d | 2026-12-09 | 2026-12-10 | B39-1040 SS+4d, B39-1040 FF+3d, R1-1050 |  |  | 2026-11-12 | 2026-11-13 | -14d | Block 39 - Parapet | Finished | Finish crew |

| ID | WBS | Activity | Type | Duration | Start | Finish | Predecessors | Planned start | Planned finish | Total float | Location | Install Stage | Crew |
| --- | --- | --- | --- | --- | --- | --- | --- | --- | --- | --- | --- | --- | --- |
|  | R2 | **Roof R2** |  |  | 2026-11-10 | 2026-12-16 |  |  |  |  |  |  |  |
| R2-1000 |  | Roof R2 – Layout & track |  | 2d | 2026-11-10 | 2026-11-11 | IN-0100, B39-1010 SS+1d | 2026-10-28 | 2026-10-29 | -9d | R2 | Layout | Layout crew |
| R2-1010 |  | Roof R2 – Frame walls |  | 6d | 2026-11-11 | 2026-11-18 | R2-1000 SS+1d, B39-1010 | 2026-10-29 | 2026-11-05 | -9d | R2 | Framed | Framing crew |
| R2-1030 |  | Roof R2 – Hang board |  | 4d | 2026-11-17 | 2026-11-20 | R2-1010 SS+3d, R2-1010 FF+2d, R2-1020 FF+1d, B39-1030 | 2026-11-04 | 2026-11-09 | -8d | R2 | Boarded | Board crew |
| R2-1020 |  | Roof R2 – Cover inspection (in-wall MEP) | milestone | 0d | 2026-11-19 | 2026-11-19 | R2-1010 FS+1d | 2026-11-06 | 2026-11-06 | -8d | R2 | Inspection | GC / by others |
| R2-1040 |  | Roof R2 – Tape & mud |  | 5d | 2026-12-07 | 2026-12-11 | R2-1030 SS+3d, R2-1030 FF+3d, B39-1040 | 2026-11-10 | 2026-11-16 | -17d | R2 | Taped | Finish crew |
| R2-1050 |  | Roof R2 – Sand, finish & punch |  | 4d | 2026-12-11 | 2026-12-16 | R2-1040 SS+4d, R2-1040 FF+3d, B39-1050 | 2026-11-16 | 2026-11-19 | -14d | R2 | Finished | Finish crew |
|  | GR | **Green Roof Hardscape** |  |  | 2026-11-16 | 2026-12-28 |  |  |  |  |  |  |  |
| GR-1000 |  | Green Roof Hardscape – Layout & track |  | 2d | 2026-11-16 | 2026-11-17 | IN-0100, R2-1010 SS+3d | 2026-11-03 | 2026-11-04 | -7d | Green Roof Hardscape | Layout | Layout crew |
| GR-1010 |  | Green Roof Hardscape – Frame walls |  | 7d | 2026-11-19 | 2026-12-01 | GR-1000 SS+1d, R2-1010 | 2026-11-06 | 2026-11-16 | -9d | Green Roof Hardscape | Framed | Framing crew |
| GR-1030 |  | Green Roof Hardscape – Hang board |  | 5d | 2026-11-25 | 2026-12-03 | GR-1010 SS+3d, GR-1010 FF+2d, GR-1020 FF+1d, R2-1030 | 2026-11-12 | 2026-11-18 | -9d | Green Roof Hardscape | Boarded | Board crew |
| GR-1020 |  | Green Roof Hardscape – Cover inspection (in-wall MEP) | milestone | 0d | 2026-12-02 | 2026-12-02 | GR-1010 FS+1d | 2026-11-17 | 2026-11-17 | -9d | Green Roof Hardscape | Inspection | GC / by others |
| GR-1040 |  | Green Roof Hardscape – Tape & mud |  | 6d | 2026-12-14 | 2026-12-21 | GR-1030 SS+3d, GR-1030 FF+3d, R2-1040 | 2026-11-17 | 2026-11-24 | -17d | Green Roof Hardscape | Taped | Finish crew |
| GR-1050 |  | Green Roof Hardscape – Sand, finish & punch |  | 4d | 2026-12-21 | 2026-12-28 | GR-1040 SS+4d, GR-1040 FF+3d, R2-1050 | 2026-11-24 | 2026-12-01 | -16d | Green Roof Hardscape | Finished | Finish crew |
|  | PP | **Parapet** |  |  | 2026-11-25 | 2026-12-31 |  |  |  |  |  |  |  |
| PP-1000 |  | Parapet – Layout & track |  | 2d | 2026-11-25 | 2026-11-30 | IN-0100, GR-1010 SS+4d | 2026-11-12 | 2026-11-13 | -6d | Parapet | Layout | Layout crew |
| PP-1010 |  | Parapet – Frame walls |  | 2d | 2026-12-02 | 2026-12-03 | PP-1000 SS+1d, GR-1010 | 2026-11-17 | 2026-11-18 | -8d | Parapet | Framed | Framing crew |
| PP-1030 |  | Parapet – Hang board |  | 2d | 2026-12-04 | 2026-12-07 | PP-1010 SS+1d, PP-1010 FF+2d, PP-1020 FF+1d, GR-1030 | 2026-11-19 | 2026-11-20 | -8d | Parapet | Boarded | Board crew |
| PP-1020 |  | Parapet – Cover inspection (in-wall MEP) | milestone | 0d | 2026-12-04 | 2026-12-04 | PP-1010 FS+1d | 2026-11-19 | 2026-11-19 | -8d | Parapet | Inspection | GC / by others |
| PP-1040 |  | Parapet – Tape & mud |  | 2d | 2026-12-22 | 2026-12-23 | PP-1030 SS+3d, PP-1030 FF+3d, GR-1040 | 2026-11-25 | 2026-11-30 | -17d | Parapet | Taped | Finish crew |
| PP-1050 |  | Parapet – Sand, finish & punch |  | 2d | 2026-12-30 | 2026-12-31 | PP-1040 SS+4d, PP-1040 FF+3d, GR-1050 | 2026-12-03 | 2026-12-04 | -17d | Parapet | Finished | Finish crew |
